# ProjectPlan-ICTM-web-applications

How a schedule from MS Project changed from version to version. A marks actual dates.

## Version 1 (saved 2017-07-13, file ProjectPlan-ICTM-web-applications (2).mpp)

Note of the change: sakib

| ID | WBS | Task | Duration | Start | Finish | Predecessors | Complete | Total float | Constraint |
| --- | --- | --- | --- | --- | --- | --- | --- | --- | --- |
| 1 | 1 | **Phase-1: Requirements Analysis & Design** | 59d | 2017-05-01 A | 2017-07-08 |  | 87% | 0d |  |
| 2 | 1.1 | **Requirements Gathering** | 16d | 2017-05-01 A | 2017-05-18 A |  | 100% |  |  |
| 3 |  | Analyse the Existing Site | 3d | 2017-05-01 A | 2017-05-03 A |  | 100% |  |  |
| 4 |  | Create Proposal | 4d | 2017-05-04 A | 2017-05-08 A |  | 100% |  | finish no earlier than 2017-05-09 |
| 5 |  | Presenting proposal | 1d | 2017-05-09 A | 2017-05-09 A | 4 | 100% |  |  |
| 6 |  | Analyse the feedback from presentation | 2d | 2017-05-11 A | 2017-05-12 A | 5 | 100% |  | finish no earlier than 2017-05-13 |
| 7 |  | Create Specification | 1d | 2017-05-14 A | 2017-05-15 A | 6 | 100% |  | finish no earlier than 2017-05-15 |
| 8 |  | Incorporate the additional requirements from feedback | 3d | 2017-05-16 A | 2017-05-18 A | 7 | 100% |  | start no earlier than 2017-06-03 |
| 9 | 1.2 | **Analysing the requirements** | 11d | 2017-05-20 A | 2017-05-31 A |  | 100% |  |  |
| 10 |  | Analysis the Specification | 5d | 2017-05-20 A | 2017-05-24 A | 8 | 100% |  |  |
| 11 |  | Create Sample Layout | 2d | 2017-05-25 A | 2017-05-27 A | 10 | 100% |  | start no earlier than 2017-05-25 |
| 12 |  | Present Sample layout and Get feedback from the client | 1d | 2017-05-28 A | 2017-05-28 A | 11 | 100% |  |  |
| 13 |  | Analyse the Feedback | 3d | 2017-05-29 A | 2017-05-31 A | 12 | 100% |  |  |
| 14 | 1.3 | **Team Bulding** | 9d | 2017-06-01 A | 2017-06-11 A |  | 100% |  |  |
| 15 |  | Setting Up Team & Environment etc. | 9d | 2017-06-01 A | 2017-06-11 A |  | 100% |  |  |
| 16 | 1.4 | **DESIGN** | 23d | 2017-06-12 A | 2017-07-08 |  | 61% | 0d |  |
| 17 | 1.4.1 | **Finalising the design layout** | 17d | 2017-06-12 A | 2017-07-01 |  | 92% | 0d |  |
| 18 |  | Create design and layout Incorporating the requirements | 6d | 2017-06-12 A | 2017-06-18 A | 13 | 100% |  | finish no earlier than 2017-06-18 |
| 19 |  | Creation of Web Graphics, Page Backgrounds or website skins. | 4d | 2017-06-19 A | 2017-06-22 A | 18 | 100% |  | start no earlier than 2017-06-19 |
| 20 |  | implementing Bootstrap framework | 1d | 2017-06-24 A | 2017-06-24 A | 19 | 100% |  | start no earlier than 2017-06-24 |
| 21 |  | Optimization of graphics to ensure a fast loading web page. | 1d | 2017-07-01 | 2017-07-01 | 20 |  |  |  |
| 22 | 1.4.2 | **Testing and design Approval** | 6d | 2017-07-02 | 2017-07-08 |  |  | 0d |  |
| 23 |  | Test using the test cases e.g. compatibility, w3c standard | 2d | 2017-07-02 | 2017-07-03 | 17 |  |  |  |
| 24 |  | Submit the final design | 1d | 2017-07-04 | 2017-07-04 | 23 |  |  |  |
| 25 |  | Tweaks the changes and resubmit for approval | 3d | 2017-07-05 | 2017-07-08 | 24 |  |  |  |
| 27 | 2 | **Phase-2: Website Front End Development (Part-1)** | 15d | 2017-07-03 A | 2017-07-19 |  | 6% |  |  |
| 28 | 2.1 | **Database Development** | 15d | 2017-07-03 A | 2017-07-19 |  | 10% |  |  |
| 29 |  | Analyse the requirements | 10d | 2017-07-03 A | 2017-07-13 |  | 14% |  |  |
| 30 |  | Design the database schema | 12d | 2017-07-03 A | 2017-07-16 |  | 8% |  |  |
| 31 |  | Create the tables | 1d | 2017-07-17 | 2017-07-17 |  |  |  |  |
| 32 |  | Database Testing (using the test cases) | 1d | 2017-07-18 | 2017-07-18 |  |  |  |  |
| 33 |  | Changes and fixing | 1d | 2017-07-19 | 2017-07-19 |  |  |  |  |
| 34 | 2.2 | **Wireframe Development (front end)** | 13d | 2017-07-03 | 2017-07-17 |  |  |  |  |
| 35 |  | Developing the wireframe for front end | 11d | 2017-07-03 | 2017-07-15 |  |  |  |  |
| 36 |  | Testing the front end wireframe | 1d | 2017-07-16 | 2017-07-16 |  |  |  |  |
| 37 |  | Changing & Release front end wireframe for the approval | 1d | 2017-07-17 | 2017-07-17 |  |  |  |  |
| 39 | 3 | **Phase-3: CMS Development (Part-1)** | 27d | 2017-07-02 | 2017-08-01 |  |  |  |  |
| 40 | 3.1 | **Wireframe Development (admin panel)** | 6d | 2017-07-16 | 2017-07-22 |  |  | 0d |  |
| 41 |  | Developing the wireframe for admin panel (page,menu,course) | 1d | 2017-07-16 | 2017-07-16 |  |  |  |  |
| 42 |  | Developing the wireframe for admin panel (faculty,event,photo,user) | 2d | 2017-07-18 | 2017-07-19 |  |  |  |  |
| 43 |  | Testing the admin panel wireframe | 1d | 2017-07-20 | 2017-07-20 |  |  |  |  |
| 44 |  | Changing & Release admin panel wireframe for the approval | 1d | 2017-07-22 | 2017-07-22 |  |  |  |  |
| 45 | 3.2 | **Admin Panel development** | 22d | 2017-07-08 | 2017-08-01 |  |  |  |  |
| 46 |  | Page Management - List/add/edit/delete | 6d | 2017-07-08 | 2017-07-13 |  |  |  |  |
| 47 |  | Menu Management -List/add/edit/delete | 4d | 2017-07-08 | 2017-07-11 |  |  |  |  |
| 48 |  | Course Management -List/add/edit/delete | 5d | 2017-07-14 | 2017-07-18 |  |  |  |  |
| 49 |  | Faculty management -List/add/edit/delete | 3d | 2017-07-19 | 2017-07-22 |  |  |  |  |
| 50 |  | Event/News Publishing-List/add/edit/delete | 3d | 2017-07-23 | 2017-07-25 |  |  |  |  |
| 51 |  | Photo Uploading -List/add/edit/delete | 3d | 2017-07-26 | 2017-07-29 |  |  |  |  |
| 52 |  | User Management-List/add/edit/delete | 3d | 2017-07-30 | 2017-08-01 |  |  |  |  |
| 54 | 4 | **Phase-2: Website Front End Development (Part-2)** | 32d | 2017-07-26 | 2017-08-31 |  |  |  |  |
| 55 | 4.1 | **Front end development** | 34d | 2017-07-03 | 2017-08-10 |  |  | 0d |  |
| 56 |  | Database driven customisable Homepage | 3d | 2017-07-26 | 2017-07-29 |  |  |  |  |
| 57 |  | Multi-level Dynamic Menu (Hamburger Menus) | 2d | 2017-07-30 | 2017-07-31 |  |  |  |  |
| 58 |  | Database driven Page title and content with keyword settings | 3d | 2017-07-30 | 2017-08-01 |  |  |  |  |
| 59 | 4.1.4 | **Database driven Course information (as per HEFCE guidance)** | 6d | 2017-07-26 | 2017-08-01 |  |  |  |  |
| 60 |  | Course Overview | 1d | 2017-07-26 | 2017-07-26 |  |  |  |  |
| 61 |  | Entry Requirements | 1d | 2017-07-27 | 2017-07-27 |  |  |  |  |
| 62 |  | Course Information | 1d | 2017-07-29 | 2017-07-29 |  |  |  |  |
| 63 |  | Course Cost | 1d | 2017-07-30 | 2017-07-30 |  |  |  |  |
| 64 |  | Module Information | 1d | 2017-07-31 | 2017-07-31 |  |  |  |  |
| 65 |  | Assessment/Feedback Information | 1d | 2017-08-01 | 2017-08-01 |  |  |  |  |
| 66 |  | Faculty Information | 3d | 2017-08-02 | 2017-08-05 |  |  |  |  |
| 67 |  | News and Notice Boards | 2d | 2017-07-06 | 2017-07-08 |  |  |  |  |
| 68 |  | Contact Info and Contact Form | 2d | 2017-08-01 | 2017-08-02 |  |  |  |  |
| 69 |  | Dynamic Header/Footer | 2d | 2017-08-09 | 2017-08-10 |  |  |  |  |
| 70 |  | Photo Gallery and Videos | 2d | 2017-07-03 | 2017-07-04 |  |  |  |  |
| 71 |  | Organisational Structure | 2d | 2017-07-11 | 2017-07-12 |  |  |  |  |
| 72 |  | Community Engagement | 2d | 2017-07-12 | 2017-07-13 |  |  |  |  |
| 73 |  | Alumni Page | 2d | 2017-07-13 | 2017-07-15 |  |  |  |  |

| ID | WBS | Task | Duration | Start | Finish | Total float |
| --- | --- | --- | --- | --- | --- | --- |
| 74 |  | Feedback Form | 1d | 2017-07-03 | 2017-07-03 |  |
| 75 |  | Integrating with VLE | 3d | 2017-07-03 | 2017-07-05 |  |
| 76 |  | Integration with Important Links | 1d | 2017-07-03 | 2017-07-03 |  |
| 77 |  | Captcha for spam prevention | 2d | 2017-07-03 | 2017-07-04 |  |
| 78 |  | Sitemap and Site RSS Feeds | 2d | 2017-07-03 | 2017-07-04 |  |
| 79 |  | Accessibility for disabled people | 2d | 2017-07-03 | 2017-07-04 |  |
| 80 |  | Responsive (Support for mobile devices) | 0d | 2017-07-03 | 2017-07-03 |  |
| 81 |  | SEO FriendlyCoding | 1d | 2017-07-03 | 2017-07-03 |  |
| 82 | 4.2 | **Testing & Quality Assurance** | 1d | 2017-07-26 | 2017-07-26 | 0d |
| 83 |  | Usability Testing | 1d | 2017-07-26 | 2017-07-26 |  |
| 84 |  | Functional Testing | 1d | 2017-07-26 | 2017-07-26 |  |
| 85 |  | Compatibility Testing: | 1d | 2017-07-26 | 2017-07-26 |  |
| 86 |  | Security Testing | 1d | 2017-07-26 | 2017-07-26 |  |
| 87 |  | Performance Testing | 1d | 2017-07-26 | 2017-07-26 |  |
| 88 | 4.3 | **Bug Fixing and Release** | 6d | 2017-07-26 | 2017-08-01 | 0d |
| 89 |  | Bug fixing | 6d | 2017-07-26 | 2017-08-01 |  |
| 90 |  | Release for User Acceptance Testing | 1d | 2017-07-26 | 2017-07-26 |  |
| 92 | 5 | **Phase-3: CMS Development (Part-2)** | 7d? | 2017-05-01 | 2017-05-08 | 0d |
| 93 | 5.1 | **User Role and Access Control** | 7d | 2017-05-01 | 2017-05-08 | 0d |
| 94 |  | Access Control | 3d | 2017-05-01 | 2017-05-03 |  |
| 95 |  | User Role -Admin/Editor/Guest | 2d | 2017-05-01 | 2017-05-02 |  |
| 96 |  | Page Creation with Rich Text Editor | 7d | 2017-05-01 | 2017-05-08 |  |
| 97 |  | User Login and forget password | 2d | 2017-05-01 | 2017-05-02 |  |
| 98 |  | User Profile | 4d | 2017-05-01 | 2017-05-04 |  |
| 99 |  | Edit profile and password | 2d | 2017-05-01 | 2017-05-02 |  |
| 100 | 5.2 | **Testing & Quality Assurance** | 2d | 2017-05-01 | 2017-05-02 | 0d |
| 101 |  | Usability Testing | 1d | 2017-05-01 | 2017-05-01 |  |
| 102 |  | Functional Testing | 2d | 2017-05-01 | 2017-05-02 |  |
| 103 |  | Compatibility Testing: | 1d | 2017-05-01 | 2017-05-01 |  |
| 104 |  | Security Testing | 1d | 2017-05-01 | 2017-05-01 |  |
| 105 |  | Performance Testing | 1d | 2017-05-01 | 2017-05-01 |  |
| 106 | 5.3 | **Content Management** | 5d | 2017-05-01 | 2017-05-06 | 0d |
| 107 |  | Creating pages | 5d | 2017-05-01 | 2017-05-06 |  |
| 108 |  | Entering Course Information | 4d | 2017-05-01 | 2017-05-04 |  |
| 109 |  | Entering Faculty information | 5d | 2017-05-01 | 2017-05-06 |  |
| 110 |  | Entering Event/News | 4d | 2017-05-01 | 2017-05-04 |  |
| 111 |  | Uploading Photos | 3d | 2017-05-01 | 2017-05-03 |  |
| 112 |  | Creating users | 3d | 2017-05-01 | 2017-05-03 |  |
| 113 | 5.4 | **Bug Fixing & Release** | 2d? | 2017-05-01 | 2017-05-02 | 0d |
| 114 |  | Bug fixing | 2d | 2017-05-01 | 2017-05-02 |  |
| 115 |  | Release for User Acceptance Testing | 1d | 2017-05-01 | 2017-05-01 |  |
| 117 | 6 | **Phase-4: Social Media Network** | 1d | 2017-05-01 | 2017-05-01 | 0d |
| 118 | 6.1 | **Facebook Integration** | 1d | 2017-05-01 | 2017-05-01 | 0d |
| 119 |  | Create a Facebook page | 1d | 2017-05-01 | 2017-05-01 |  |
| 120 |  | Upload content for Facebook page | 1d | 2017-05-01 | 2017-05-01 |  |
| 121 |  | Integrating Facebook page | 1d | 2017-05-01 | 2017-05-01 |  |
| 122 | 6.2 | **Twitter Integration** | 1d | 2017-05-01 | 2017-05-01 | 0d |
| 123 |  | Create a Twitter Account | 1d | 2017-05-01 | 2017-05-01 |  |
| 124 |  | Upload content for Twitter account | 1d | 2017-05-01 | 2017-05-01 |  |
| 125 |  | Integrating Twitter account | 1d | 2017-05-01 | 2017-05-01 |  |
| 126 | 6.3 | **Youtube Integration** | 1d | 2017-05-01 | 2017-05-01 | 0d |
| 127 |  | Create a Youtube channel | 1d | 2017-05-01 | 2017-05-01 |  |
| 128 |  | Upload content for Youtube channel | 1d | 2017-05-01 | 2017-05-01 |  |
| 129 |  | Integrating Youtube channel | 1d | 2017-05-01 | 2017-05-01 |  |
| 130 | 6.4 | **Google+ Integration** | 1d | 2017-05-01 | 2017-05-01 | 0d |
| 131 |  | Create a google plus page | 1d | 2017-05-01 | 2017-05-01 |  |
| 132 |  | Upload content for google plus page | 1d | 2017-05-01 | 2017-05-01 |  |
| 133 |  | Integrating google plus page | 1d | 2017-05-01 | 2017-05-01 |  |
| 134 | 6.5 | **LinkdIn Integration** | 1d | 2017-05-01 | 2017-05-01 | 0d |
| 135 |  | Create a LinkdIn Page | 1d | 2017-05-01 | 2017-05-01 |  |
| 136 |  | Upload content for LinkdIn page | 1d | 2017-05-01 | 2017-05-01 |  |
| 137 |  | Integrating LinkdIn page | 1d | 2017-05-01 | 2017-05-01 |  |

## Version 2 (saved 2017-07-22, file ProjectPlan-ICTM-web-applications updated on 22-07-2017.mpp)

Note of the change: sakib

Last finish 2017-08-31 → 2017-09-12 (+12d). Complete tasks 14 → 25.

Added:

| ID | Task | Duration | Start | Finish | Resources |
| --- | --- | --- | --- | --- | --- |
| 46 | Configure the codignetor framwork & development environment | 2d | 2017-07-23 | 2017-07-24 | Sakib |
| 57 | Configure the codignetor framwork | 1d | 2017-08-07 | 2017-08-07 | Sakib |

Changed:

| ID | Task | Start | Finish | Duration | Complete | Total float | Other |
| --- | --- | --- | --- | --- | --- | --- | --- |
| 1 | **Phase-1: Requirements Analysis & Design** |  | 2017-07-08 A |  | 87% → 100% | 0d → none |  |
| 16 | **DESIGN** |  | 2017-07-08 A |  | 61% → 100% | 0d → none |  |
| 17 | **Finalising the design layout** |  | 2017-07-01 A |  | 92% → 100% | 0d → none |  |
| 21 | Optimization of graphics to ensure a fast loading web page. | 2017-07-01 A | 2017-07-01 A |  | 0% → 100% |  |  |
| 22 | **Testing and design Approval** | 2017-07-02 A | 2017-07-08 A |  | 0% → 100% | 0d → none |  |
| 23 | Test using the test cases e.g. compatibility, w3c standard | 2017-07-02 A | 2017-07-03 A |  | 0% → 100% |  |  |
| 24 | Submit the final design | 2017-07-04 A | 2017-07-04 A |  | 0% → 100% |  |  |
| 25 | Tweaks the changes and resubmit for approval | 2017-07-05 A | 2017-07-08 A |  | 0% → 100% |  |  |
| 27 | **Phase-2: Website Front End Development (Part-1)** |  | 2017-07-19 → 2017-07-22 (+3d) | 15d → 17d | 6% → 92% |  |  |
| 28 | **Database Development** |  | 2017-07-19 A |  | 10% → 100% |  |  |
| 29 | Analyse the requirements |  | 2017-07-13 A |  | 14% → 100% |  |  |
| 30 | Design the database schema |  | 2017-07-16 A |  | 8% → 100% |  |  |
| 31 | Create the tables | 2017-07-17 A | 2017-07-17 A |  | 0% → 100% |  |  |
| 32 | Database Testing (using the test cases) | 2017-07-18 A | 2017-07-18 A |  | 0% → 100% |  |  |
| 33 | Changes and fixing | 2017-07-19 A | 2017-07-19 A |  | 0% → 100% |  |  |
| 34 | **Wireframe Development (front end)** | 2017-07-03 A | 2017-07-17 → 2017-07-22 (+5d) | 13d → 17d | 0% → 81% |  |  |
| 35 | Developing the wireframe for front end | 2017-07-03 A | 2017-07-15 A |  | 0% → 100% |  |  |
| 36 | Testing the front end wireframe | 2017-07-16 A | 2017-07-16 A |  | 0% → 100% |  |  |
| 37 | Changing & Release front end wireframe for the approval | 2017-07-17 A | 2017-07-17 → 2017-07-22 (+5d) | 1d → 5d | 0% → 50% |  |  |
| 39 | **Phase-3: CMS Development (Part-1)** |  | 2017-08-01 → 2017-08-06 (+5d) | 27d → 31d |  |  |  |
| 40 | **Wireframe Development (admin panel)** | 2017-07-16 → 2017-07-23 (+7d) | 2017-07-22 → 2017-07-27 (+5d) | 6d → 5d |  |  |  |
| 41 | Developing the wireframe for admin panel (page,menu,course) | 2017-07-16 → 2017-07-23 (+7d) | 2017-07-16 → 2017-07-24 (+8d) | 1d → 2d |  |  |  |
| 42 | Developing the wireframe for admin panel (faculty,event,photo,user) | 2017-07-18 → 2017-07-25 (+7d) | 2017-07-19 → 2017-07-25 (+6d) | 2d → 1d |  |  |  |
| 43 | Testing the admin panel wireframe | 2017-07-20 → 2017-07-26 (+6d) | 2017-07-20 → 2017-07-26 (+6d) |  |  |  |  |
| 44 | Changing & Release admin panel wireframe for the approval | 2017-07-22 → 2017-07-27 (+5d) | 2017-07-22 → 2017-07-27 (+5d) |  |  |  |  |
| 45 | **Admin Panel development** |  | 2017-08-01 → 2017-08-06 (+5d) | 22d → 26d |  |  |  |
| 47 | Page Management - List/add/edit/delete | 2017-07-08 → 2017-07-25 (+17d) | 2017-07-13 → 2017-07-31 (+18d) |  |  |  |  |
| 48 | Menu Management -List/add/edit/delete | 2017-07-08 → 2017-07-25 (+17d) | 2017-07-11 → 2017-07-29 (+18d) |  |  |  |  |
| 49 | Course Management -List/add/edit/delete | 2017-07-14 → 2017-08-01 (+18d) | 2017-07-18 → 2017-08-06 (+19d) |  |  |  |  |
| 50 | Faculty management -List/add/edit/delete | 2017-07-19 → 2017-07-29 (+10d) | 2017-07-22 → 2017-07-31 (+9d) |  |  |  |  |
| 51 | Event/News Publishing-List/add/edit/delete | 2017-07-23 → 2017-07-08 (-15d) | 2017-07-25 → 2017-07-10 (-15d) |  |  |  |  |
| 52 | Photo Uploading -List/add/edit/delete | 2017-07-26 → 2017-08-01 (+6d) | 2017-07-29 → 2017-08-03 (+5d) |  |  |  |  |
| 53 | User Management-List/add/edit/delete | 2017-07-30 → 2017-07-28 (-2d) | 2017-08-01 → 2017-07-30 (-2d) |  |  |  |  |
| 55 | **Phase-2: Website Front End Development (Part-2)** | 2017-07-26 → 2017-08-07 (+12d) | 2017-08-31 → 2017-09-12 (+12d) |  |  |  |  |
| 84 | **Testing & Quality Assurance** | 2017-07-26 → 2017-08-07 (+12d) | 2017-07-26 → 2017-08-07 (+12d) |  |  |  |  |
| 85 | Usability Testing | 2017-07-26 → 2017-08-07 (+12d) | 2017-07-26 → 2017-08-07 (+12d) |  |  |  |  |
| 86 | Functional Testing | 2017-07-26 → 2017-08-07 (+12d) | 2017-07-26 → 2017-08-07 (+12d) |  |  |  |  |
| 87 | Compatibility Testing: | 2017-07-26 → 2017-08-07 (+12d) | 2017-07-26 → 2017-08-07 (+12d) |  |  |  |  |
| 88 | Security Testing | 2017-07-26 → 2017-08-07 (+12d) | 2017-07-26 → 2017-08-07 (+12d) |  |  |  |  |
| 89 | Performance Testing | 2017-07-26 → 2017-08-07 (+12d) | 2017-07-26 → 2017-08-07 (+12d) |  |  |  |  |
| 90 | **Bug Fixing and Release** | 2017-07-26 → 2017-08-07 (+12d) | 2017-08-01 → 2017-08-13 (+12d) |  |  |  |  |
| 91 | Bug fixing | 2017-07-26 → 2017-08-07 (+12d) | 2017-08-01 → 2017-08-13 (+12d) |  |  |  |  |
| 92 | Release for User Acceptance Testing | 2017-07-26 → 2017-08-07 (+12d) | 2017-07-26 → 2017-08-07 (+12d) |  |  |  |  |
| 119 | **Phase-4: Social Media Network** | 2017-05-01 → 2017-07-29 (+89d) | 2017-05-01 → 2017-08-21 (+112d) | 1d → 21d |  | 0d → none |  |
| 120 | **Facebook Integration** | 2017-05-01 → 2017-07-29 (+89d) | 2017-05-01 → 2017-08-01 (+92d) | 1d → 4d |  | 0d → none |  |
| 121 | Create a Facebook page | 2017-05-01 → 2017-07-29 (+89d) | 2017-05-01 → 2017-07-29 (+89d) |  |  |  | resources none → Suzon |
| 122 | Upload content for Facebook page | 2017-05-01 → 2017-07-30 (+90d) | 2017-05-01 → 2017-07-31 (+91d) | 1d → 2d |  |  | resources none → Suzon |
| 123 | Integrating Facebook page | 2017-05-01 → 2017-08-01 (+92d) | 2017-05-01 → 2017-08-01 (+92d) |  |  |  | resources none → Suzon |
| 124 | **Twitter Integration** | 2017-05-01 → 2017-08-02 (+93d) | 2017-05-01 → 2017-08-06 (+97d) | 1d → 4d |  | 0d → none |  |
| 125 | Create a Twitter Account | 2017-05-01 → 2017-08-02 (+93d) | 2017-05-01 → 2017-08-02 (+93d) |  |  |  | resources none → Suzon |
| 126 | Upload content for Twitter account | 2017-05-01 → 2017-08-03 (+94d) | 2017-05-01 → 2017-08-05 (+96d) | 1d → 2d |  |  | resources none → Suzon |
| 127 | Integrating Twitter account | 2017-05-01 → 2017-08-06 (+97d) | 2017-05-01 → 2017-08-06 (+97d) |  |  |  | resources none → Suzon |
| 128 | **Youtube Integration** | 2017-05-01 → 2017-08-07 (+98d) | 2017-05-01 → 2017-08-12 (+103d) | 1d → 5d |  | 0d → none |  |
| 129 | Create a Youtube channel | 2017-05-01 → 2017-08-07 (+98d) | 2017-05-01 → 2017-08-08 (+99d) | 1d → 2d |  |  | resources none → Suzon |
| 130 | Upload content for Youtube channel | 2017-05-01 → 2017-08-09 (+100d) | 2017-05-01 → 2017-08-10 (+101d) | 1d → 2d |  |  | resources none → Suzon |
| 131 | Integrating Youtube channel | 2017-05-01 → 2017-08-12 (+103d) | 2017-05-01 → 2017-08-12 (+103d) |  |  |  | resources none → Suzon |
| 132 | **Google+ Integration** | 2017-05-01 → 2017-08-13 (+104d) | 2017-05-01 → 2017-08-16 (+107d) | 1d → 4d |  | 0d → none |  |
| 133 | Create a google plus page | 2017-05-01 → 2017-08-13 (+104d) | 2017-05-01 → 2017-08-13 (+104d) |  |  |  | resources none → Suzon |
| 134 | Upload content for google plus page | 2017-05-01 → 2017-08-14 (+105d) | 2017-05-01 → 2017-08-15 (+106d) | 1d → 2d |  |  | resources none → Suzon |
| 135 | Integrating google plus page | 2017-05-01 → 2017-08-16 (+107d) | 2017-05-01 → 2017-08-16 (+107d) |  |  |  | resources none → Suzon |
| 136 | **LinkdIn Integration** | 2017-05-01 → 2017-08-17 (+108d) | 2017-05-01 → 2017-08-21 (+112d) | 1d → 4d |  | 0d → none |  |
| 137 | Create a LinkdIn Page | 2017-05-01 → 2017-08-17 (+108d) | 2017-05-01 → 2017-08-17 (+108d) |  |  |  | resources none → Suzon |
| 138 | Upload content for LinkdIn page | 2017-05-01 → 2017-08-19 (+110d) | 2017-05-01 → 2017-08-20 (+111d) | 1d → 2d |  |  | resources none → Suzon |
| 139 | Integrating LinkdIn page | 2017-05-01 → 2017-08-21 (+112d) | 2017-05-01 → 2017-08-21 (+112d) |  |  |  | resources none → Suzon |
